# Gantt

Schedule from MS Project, 2018-11-13 to 2018-12-07.
ATIW Berufskolleg

## Calendars

- Standard: Mon-Fri 08:00-12:00, 13:00-17:00; Sat-Sun off.

## Resources

| Resource |
| --- |
| Sebastian Bauer |
| Julius Nordhues |
| Unbekannt |
| Kunde |
| Sebastian |

## Schedule

| ID | WBS | Task | Type | Duration | Start | Finish | Predecessors | Total slack | Free slack | Constraint | Resources | Work |
| --- | --- | --- | --- | --- | --- | --- | --- | --- | --- | --- | --- | --- |
| 1 | 1 | Absprache mit dem Kunden |  | 1h | 2018-11-13 08:00 | 2018-11-13 09:00 |  | 4.01d | 0d | start no earlier than 2018-11-13 08:00 | Julius Nordhues; Sebastian Bauer | 2h |
| 2 | 2 | **Anforderungsanalyse** |  | 1.88d | 2018-11-13 09:00 | 2018-11-14 17:00 | 1 | 8.09d |  |  | Julius Nordhues; Sebastian Bauer | 18.67h |
| 3 | 2.1 | Erstellung von Arbeitspaketen |  | 0.3h | 2018-11-13 09:00 | 2018-11-13 09:18 | 1 | 4.01d | 0d |  | Julius Nordhues; Sebastian Bauer | 0.6h |
| 4 | 2.2 | Erstellung von Projektstrukturplan |  | 0.2h | 2018-11-13 09:18 | 2018-11-13 09:30 | 3 | 4.01d | 0.93d |  | Julius Nordhues; Sebastian Bauer | 0.4h |
| 5 | 2.3 | Erstellung von Gantt |  | 2h | 2018-11-14 08:55 | 2018-11-14 17:00 | 4 | 8.09d | 0d | finish no earlier than 2018-11-14 17:00 | Julius Nordhues; Sebastian Bauer | 4h |
| 6 | 3 | Projektantrag schreiben |  | 1h | 2018-11-15 07:30 | 2018-11-15 08:30 | 5 | 12.44d | 0.94d |  | Julius Nordhues; Sebastian Bauer | 2h |
| 7 | 4 | Projektantrag einreichen | milestone | 0d | 2018-11-16 08:00 | 2018-11-16 08:00 | 6 | 15.12d |  | start no earlier than 2018-11-16 08:00 | Julius Nordhues; Sebastian Bauer |  |
| 8 | 5 | **Planung** |  | 7d | 2018-11-19 08:00 | 2018-11-27 17:00 |  |  |  |  | Julius Nordhues; Sebastian Bauer | 103.13h |
| 9 | 5.1 | **Erstellung von UML Diagrammen** |  | 1.09d | 2018-11-19 08:00 | 2018-11-20 08:45 | 5 | 6.09d |  |  | Julius Nordhues; Sebastian Bauer | 24h |
| 10 | 5.1.1 | Usecases |  | 1h | 2018-11-19 08:00 | 2018-11-19 09:00 | 5 | 3.04d | 0d |  | Julius Nordhues; Sebastian Bauer | 2h |
| 11 | 5.1.2 | Klassen |  | 2.5h | 2018-11-19 09:00 | 2018-11-19 11:30 | 10 | 3.32d | 0d |  | Julius Nordhues; Sebastian Bauer | 5h |
| 12 | 5.1.3 | Sequenzdiagramm |  | 1h | 2018-11-19 11:30 | 2018-11-19 12:30 | 11 | 3.66d | 0d |  | Julius Nordhues; Sebastian Bauer | 2h |
| 13 | 5.1.4 | Datenbankmodell |  | 1.5h | 2018-11-19 12:30 | 2018-11-20 08:45 | 12 | 3.73d | 0d |  | Julius Nordhues; Sebastian Bauer | 3h |
| 14 | 5.2 | **GUI planen** |  | 0.11d | 2018-11-19 08:00 | 2018-11-19 08:54 | 5 | 7.11d |  |  | Sebastian Bauer | 1.8h |
| 15 | 5.2.1 | Wireframe Startseite |  | 0.1h | 2018-11-19 08:00 | 2018-11-19 08:06 | 5 | 4.3d | 0d |  | Sebastian Bauer | 0.1h |
| 16 | 5.2.2 | Wireframe für dynamische UI |  | 0.2h | 2018-11-19 08:06 | 2018-11-19 08:18 | 15 | 4.3d | 0d |  | Sebastian Bauer | 0.2h |
| 17 | 5.2.3 | Wireframe für Prozessfortschritt |  | 0.1h | 2018-11-19 08:18 | 2018-11-19 08:24 | 16 | 4.3d | 0d |  | Sebastian Bauer | 0.1h |
| 18 | 5.2.4 | XML-Format Planen |  | 0.5h | 2018-11-19 08:24 | 2018-11-19 08:54 | 17 | 4.3d | 0.98d |  | Sebastian Bauer | 0.5h |
| 19 | 5.3 | Pflichtenheft schreiben |  | 7h | 2018-11-20 08:45 | 2018-11-21 10:50 | 13, 18 | 3.85d | 1.65d | finish no earlier than 2018-11-20 17:00 | Julius Nordhues; Sebastian Bauer | 14h |
| 20 | 5.4 | Pflichtenheft abgeben | milestone | 0d | 2018-11-23 08:00 | 2018-11-23 08:00 | 19 | 5.3d | 0d | start no earlier than 2018-11-23 08:00 | Julius Nordhues; Sebastian Bauer |  |
| 21 | 6 | **Durchführung** |  | 6d? | 2018-11-23 08:00 | 2018-12-03 08:00 | 18, 20, 13 | 4d |  |  |  | 52.18h |
| 22 | 6.1 | Datenbank aufsetzen |  | 1d | 2018-11-23 08:00 | 2018-11-26 12:35 | 20 | 4.5d | 0d |  | Julius Nordhues; Sebastian Bauer | 16h |
| 23 | 6.2 | Verknüpfung zur Datenbank |  | 0.85d | 2018-11-26 12:35 | 2018-11-28 09:12 | 22 | 4.91d |  |  | Sebastian Bauer; Julius Nordhues | 13.58h |
| 24 | 6.3 | **XML Interpreter schreiben** |  | 2.18d | 2018-11-23 08:00 | 2018-11-27 09:26 | 20 | 5.3d |  |  |  | 10.1h |
| 25 | 6.3.1 | Geeignete Bibliotheken bestimmen |  | 0.1h | 2018-11-23 08:00 | 2018-11-23 08:06 | 20 | 2.21d | 0d |  | Julius Nordhues | 0.1h |
| 26 | 6.3.2 | Auslesen der Tags |  | 1d | 2018-11-23 08:06 | 2018-11-26 12:41 | 25 | 2.21d | 0d |  | Julius Nordhues | 8h |
| 27 | 6.3.3 | Erzeugung eines Objektes |  | 2h | 2018-11-26 12:41 | 2018-11-27 09:26 | 26 | 2.87d | 0d |  | Julius Nordhues | 2h |

| ID | WBS | Task | Type | Duration | Start | Finish | Predecessors | Total slack | Free slack | Resources | Work |
| --- | --- | --- | --- | --- | --- | --- | --- | --- | --- | --- | --- |
| 28 | 6.4 | **UI Handler schreiben** |  | 1.14d | 2018-11-23 08:00 | 2018-11-26 09:05 | 20 | 7.29d |  |  | 6.5h |
| 29 | 6.4.1 | Layoutrichtlinien entwickeln |  | 1.5h | 2018-11-23 08:00 | 2018-11-23 09:30 | 20 | 1.99d | 0d | Sebastian Bauer | 1.5h |
| 30 | 6.4.2 | Eingabemethodenerzeugung aus Objekt |  | 3h | 2018-11-23 09:30 | 2018-11-26 09:05 | 29 | 6.93d |  | Sebastian Bauer | 3h |
| 31 | 6.4.3 | Navigation interplementieren |  | 2h | 2018-11-23 09:30 | 2018-11-26 08:05 | 29 | 7.05d |  | Sebastian Bauer | 2h |
| 32 | 6.5 | Dokumentation schreiben |  | 3h | 2018-11-27 09:26 | 2018-11-28 07:31 | 29, 27 | 2.87d |  | Julius Nordhues; Sebastian Bauer | 6h |
| 33 | 6.6 | Fertigstellung | milestone, manual | 0d | 2018-12-03 08:00 | 2018-12-03 08:00 | 32 |  |  |  |  |
| 34 | 7 | **Testen** |  | 0.75d | 2018-12-03 08:00 | 2018-12-03 15:00 | 33 | 2.24d |  |  | 6h |
| 35 | 7.1 | Komponententest (Unittest) |  | 2h | 2018-12-03 08:00 | 2018-12-03 10:00 | 33 | 2.24d | 0d | Julius Nordhues | 2h |
| 36 | 7.2 | Integrationstest |  | 1h | 2018-12-03 10:00 | 2018-12-03 11:00 | 35 | 2.81d | 0d | Sebastian Bauer | 1h |
| 37 | 7.3 | Systemtest |  | 1h | 2018-12-03 11:00 | 2018-12-03 12:00 | 36 | 3d | 0d | Sebastian Bauer | 1h |
| 38 | 7.4 | Blackboxtest von Testpersonen |  | 1h | 2018-12-03 13:00 | 2018-12-03 14:00 | 37 | 3.38d | 0d | Unbekannt | 1h |
| 39 | 7.5 | Abnahmetest |  | 1h | 2018-12-03 14:00 | 2018-12-03 15:00 | 38 | 3.38d |  | Kunde | 1h |
| 40 | 8 | Abnahme | milestone, manual | 0h | 2018-12-07 08:00 | 2018-12-07 08:00 | 38 |  |  | Julius Nordhues; Sebastian |  |
